id,group,lane,task,label,type,start,end,owners
general-meeting-all-members,Standing meetings,pgm,General Meeting — all members,Fridays 12–1 pm · B13 Garage · ME1 meets inside,bar,2026-09-04,2026-12-11,geo
me1-senior-design,Standing meetings,hvb,ME1 — HV dune buggy conversion,Fridays 12–1 pm · B13 Garage · inside the General Meeting,bar,2026-10-16,2026-12-11,ant
me2-senior-design,Standing meetings,vhi,ME2 — RC-scale electric drivetrain,Fridays 2–3 pm · B13 Garage,bar,2026-10-16,2026-12-11,jef
ee1-senior-design,Standing meetings,vhi,EE1 — Instrumentation & CAN,Fridays 3–4 pm · B13 Garage,bar,2026-10-16,2026-12-11,min
general-mechanical,Standing meetings,vhi,General Mechanical,Tuesdays 2–3 pm · B13 Garage,bar,2026-10-13,2026-12-08,geo
leadership-meeting,Standing meetings,pgm,Leadership Meeting,Tuesdays 3:30–4:30 pm · B13 Garage,bar,2026-10-13,2026-12-08,geo
ee2-senior-design,Standing meetings,pcm,EE2 — Powertrain simulation & controls,Tuesdays 4:30–5:30 pm · B13 Garage,bar,2026-10-13,2026-12-08,ron
marcom-meeting,Standing meetings,biz,MarCom — General Requirements & media,Wednesdays 3 pm · location to confirm,bar,2026-11-04,2026-12-09,mar bri hen
advisor-sync-dr-wang,Standing meetings,pgm,Advisor sync — Dr. Wang,time to confirm,tbd,2026-09-08,2026-12-12,geo
off-road-targets-read-the-requirement,Deliverable research — report back 11 Sept,vse,Off-Road Targets — read the requirement,report specifics,bar,2026-09-02,2026-09-11,ron
off-road-targets-battery-and-mass-angle,Deliverable research — report back 11 Sept,vse,Off-Road Targets — battery and mass angle,report specifics,bar,2026-09-02,2026-09-11,dav
off-road-targets-packaging-and-geometry,Deliverable research — report back 11 Sept,vse,Off-Road Targets — packaging and geometry,report specifics,bar,2026-09-02,2026-09-11,fra
baseline-vehicle-testing-read-the-requirement,Deliverable research — report back 11 Sept,vse,Baseline Vehicle Testing — read the requirement,report specifics,bar,2026-09-02,2026-09-11,min
pit-requirements-read-all-seven-components,Deliverable research — report back 11 Sept,vse,PIT requirements — read all seven components,report specifics + dates,bar,2026-09-02,2026-09-11,aya
read-vdr-rev-0-end-to-end,Deliverable research — report back 11 Sept,vse,Read VDR Rev 0 end to end,one page of what binds us,bar,2026-09-01,2026-09-11,ant
questions-to-the-organizers,Deliverable research — report back 11 Sept,vse,Questions to the organizers,"section, request, our understanding",bar,2026-09-01,2026-09-08,ant
oversee-all-stla-deliverables,Deliverable research — report back 11 Sept,vse,Oversee all STLA deliverables,all year,bar,2026-09-01,2027-06-30,ant
name-all-fourteen-required-roles,Program & project management,pgm,Name all fourteen required roles,four track leads first,bar,2026-09-01,2026-09-17,geo
email-dr-wang-siemens-licence-and-training,Program & project management,pgm,Email Dr. Wang — Siemens licence and training,this week,milestone,2026-09-04,,geo
fall-workshop-registration-closes,Program & project management,pgm,Fall Workshop registration closes,end of day,milestone,2026-09-04,,geo
rev-1-releases-re-baseline,Program & project management,pgm,Rev 1 releases — re-baseline,major documentation update,bar,2026-09-04,2026-09-09,geo
team-structure-funded-position-applications,Program & project management,pgm,Team structure + funded position applications,end of day,milestone,2026-09-17,,geo
signed-good-faith-agreements,Program & project management,pgm,Signed Good Faith Agreements,end of day,milestone,2026-09-18,,geo
student-leadership-council-applications,Program & project management,pgm,Student Leadership Council applications,end of day,milestone,2026-09-18,,new
fall-workshop-atlanta,Program & project management,pgm,"Fall Workshop, Atlanta",24–26 September,bar,2026-09-24,2026-09-26,geo ant
case-study-reflection,Program & project management,pgm,Case study → reflection,case 10 Sept · update 20 Sept,bar,2026-09-10,2026-10-08,geo
fall-workshop-case-study-reflection,Program & project management,pgm,Fall Workshop Case Study Reflection,graded · 8 Oct,milestone,2026-10-08,,geo
leadership-advisor-sponsor-review-2026-10-13,Program & project management,pgm,Leadership review with advisors and sponsors,photos · CAD readiness · roster · webpage,milestone,2026-10-13,,geo
team-roster-reconciliation,Program & project management,pgm,Team roster reconciliation,one name per person before the webpage submission,bar,2026-10-13,2026-10-14,geo mar
integrated-year-1-workplan,Program & project management,pgm,Integrated Year 1 Workplan,build,bar,2026-09-15,2026-11-10,geo nat
integrated-year-1-workplan-2,Program & project management,pgm,Integrated Year 1 Workplan,graded · 17 Nov (moved from 12 Nov on 30 Oct dashboard),milestone,2026-11-17,,geo
integrated-master-schedule,Program & project management,pgm,Integrated Master Schedule,"PM materials, dependencies, dates",bar,2026-09-08,2026-11-17,nat
university-stakeholder-meeting-preparation,Program & project management,pgm,University stakeholder meeting — preparation,graded · 28 Jan,milestone,2027-01-28,,geo
stakeholder-meeting-proof-of-execution,Program & project management,pgm,Stakeholder meeting — proof of execution,graded · 18 Mar,milestone,2027-03-18,,geo
project-status-update-assurance-review,Program & project management,pgm,Project Status Update & Assurance Review,graded · 8 Apr,milestone,2027-04-08,,geo
career-expo-2026-10-21,Program & project management,pgm,ECST Internship and Career Expo,10 AM–2 PM · E&T courtyard · recruiting,milestone,2026-10-21,,geo
automobility-la-2026-11-19,Program & project management,pgm,AutoMobility LA (LA Auto Show),OEM day · optional,milestone,2026-11-19,,geo
year-1-competition,Program & project management,pgm,Year 1 Competition,dates tentative · location TBA,milestone,2027-05-21,,geo
friday-workshops-matlab-track,Onboarding & workshops,vhi,Friday workshops — MATLAB track,"12–1, weekly",bar,2026-09-04,2026-10-30,ron geo
friday-workshops-nx-track,Onboarding & workshops,vhi,Friday workshops — NX track,"12–1, weekly",bar,2026-09-04,2026-10-30,fra jef
nx-onboarding-documents-materials,Onboarding & workshops,vhi,NX onboarding documents & materials,is the deliverable,bar,2026-09-08,2026-10-10,jef dor fra ant
senior-design-scope-lock,Onboarding & workshops,vhi,Senior design scope lock,"3 sessions, Fridays 1–2",bar,2026-09-04,2026-09-18,geo
photo-video-and-headshots,Onboarding & workshops,vhi,"Photo, video and headshots","one session, everyone",milestone,2026-09-11,,geo
photo-session-2026-10-13,Onboarding & workshops,vhi,"Photo session — team photo, 10-second video, headshots",13 Oct · waivers first,milestone,2026-10-13,,mar geo
fall-workshop-teach-backs,Onboarding & workshops,vhi,Fall Workshop teach-backs,15 min from every attendee,milestone,2026-10-02,,ant geo
off-road-benchmarking-spreadsheet,VSE — vehicle systems engineering,vse,Off-road benchmarking spreadsheet,one vehicle per new member,bar,2026-09-08,2026-10-10,ant new
off-road-performance-targets,VSE — vehicle systems engineering,vse,Off-Road Performance Targets,build,bar,2026-09-15,2026-10-23,ant ron dav fra
freeze-red-team,VSE — vehicle systems engineering,vse,Freeze & red team,T−5 working days,freeze,2026-10-23,2026-10-29,ant
off-road-performance-target-development,VSE — vehicle systems engineering,vse,Off-Road Performance Target Development,graded · LARGE · 29 Oct,milestone,2026-10-29,,ant
three-architecture-matrix,VSE — vehicle systems engineering,vse,Three-architecture matrix,build &times;3,bar,2026-10-02,2027-03-15,ant ron
final-technical-report-itec-digest,VSE — vehicle systems engineering,vse,Final Technical Report — ITEC digest,build,bar,2026-10-15,2026-12-12,ant
final-technical-report,VSE — vehicle systems engineering,vse,Final Technical Report,graded · 31 Mar · Box + ASME (19 Dec is the GM-track date),milestone,2027-03-31,,ant
final-technical-report-abstract,VSE — vehicle systems engineering,vse,Final Technical Report — abstract,end of day · 11 Jan · ASME website,milestone,2027-01-11,,ant
facilities-safety-readiness,VSE — vehicle systems engineering,vse,Facilities & Safety Readiness,build,bar,2026-11-15,2027-01-14,ant dav
facilities-safety-readiness-2,VSE — vehicle systems engineering,vse,Facilities & Safety Readiness,graded · 21 Jan,milestone,2027-01-21,,ant
integrated-vehicle-architecture-selection,VSE — vehicle systems engineering,vse,Integrated Vehicle Architecture Selection,graded · X-LARGE · 25 Mar (moved EARLIER from 1 Apr on 30 Oct dashboard),milestone,2027-03-25,,ant
offroad-bootcamp,VSE — vehicle systems engineering,vse,Offroad Bootcamp,dates tentative · Chelsea Proving Ground,milestone,2027-03-31,,ant
university-it-ticket-teamcenter-nx-licence,VHI — CAD readiness and hardware,vhi,University IT ticket — Teamcenter / NX licence,external clock,tbd,2026-09-03,2026-10-10,fra
cad-workflow-diagram-8-required-steps,VHI — CAD readiness and hardware,vhi,CAD workflow diagram — 8 required steps,40% · re-baselined from 18 Sept,bar,2026-09-08,2026-10-14,fra
cad-onboarding-guide-2-pages,VHI — CAD readiness and hardware,vhi,CAD onboarding guide — 2 pages,40% · re-baselined from 20 Sept,bar,2026-09-08,2026-10-14,dor jef
cad-demonstration-video-5-min,VHI — CAD readiness and hardware,vhi,CAD demonstration video — 5 min,20% · re-baselined from 22 Sept,bar,2026-09-15,2026-10-14,fra ant
freeze-red-team-2,VHI — CAD readiness and hardware,vhi,Freeze & red team,before Atlanta,freeze,2026-09-22,2026-09-26,ant
cad-data-management-readiness,VHI — CAD readiness and hardware,vhi,CAD Data Management Readiness,submit early · 26 Sept,milestone,2026-09-26,,fra
cad-submission-freeze,VHI — CAD readiness and hardware,vhi,CAD submission freeze,T−1 · three files exported and named,milestone,2026-10-14,,fra
cad-data-management-readiness-2,VHI — CAD readiness and hardware,vhi,CAD Data Management Readiness,graded · ABSOLUTE · 15 Oct 4 pm,milestone,2026-10-15,,fra
mass-budget-v1,VHI — CAD readiness and hardware,vhi,Mass budget v1,three named owners,bar,2026-09-08,2026-09-18,fra dav min
rear-eaxle-benchmark-packaging,VHI — CAD readiness and hardware,vhi,Rear eAxle benchmark & packaging,feeds all three architectures,bar,2026-09-15,2026-12-18,fra
baseline-vehicle-testing-characterization,VHI — CAD readiness and hardware,vhi,Baseline Vehicle Testing & Characterization,spring campaign,tbd,2027-01-15,2027-05-06,min
baseline-vehicle-testing-characterization-2,VHI — CAD readiness and hardware,vhi,Baseline Vehicle Testing & Characterization,graded · 6 May,milestone,2027-05-06,,min
matlab-simulink-onramp-cohort,PCM — propulsion controls & modeling,pcm,MATLAB & Simulink Onramp cohort,team-set,bar,2026-09-04,2026-09-18,ron
two-controller-compliance-check,PCM — propulsion controls & modeling,pcm,Two-controller compliance check,rule C-3.1,bar,2026-09-11,2026-09-18,ron dav
pcm-onboarding-guide,PCM — propulsion controls & modeling,pcm,PCM onboarding guide,IS the deliverable,bar,2026-09-20,2026-10-15,ron
onboard-training-runs-from-the-guide,PCM — propulsion controls & modeling,pcm,Onboard training runs from the guide,after 15 Oct,bar,2026-10-16,2026-11-04,ron
pcm-tool-check,PCM — propulsion controls & modeling,pcm,PCM Tool Check,graded · 5 Nov,milestone,2026-11-05,,ron
organizer-walkthrough-window,PCM — propulsion controls & modeling,pcm,Organizer walkthrough window,"9–20 Nov, published",bar,2026-11-09,2026-11-20,ron
virtual-vehicle-simulation-epa-cycles,PCM — propulsion controls & modeling,pcm,Virtual Vehicle Simulation — EPA cycles,"UDDS, HWFET, US06",bar,2026-10-15,2026-12-04,ron min
freeze-red-team-3,PCM — propulsion controls & modeling,pcm,Freeze & red team,T−5,freeze,2026-12-04,2026-12-10,ron
virtual-vehicle-simulation,PCM — propulsion controls & modeling,pcm,Virtual Vehicle Simulation,graded · 10 Dec,milestone,2026-12-10,,ron
nx-cohort-cell-module-modeling,HVB — high voltage battery,hvb,NX cohort & cell / module modeling,team-set,bar,2026-09-04,2026-10-15,dav
sponsored-cell-specs-module-options,HVB — high voltage battery,hvb,Sponsored cell specs & module options,ship date unknown,tbd,2026-09-15,2026-11-01,dav
per-cell-c-rate-check,HVB — high voltage battery,hvb,Per-cell C-rate check,before Atlanta,milestone,2026-09-23,,dav
battery-performance-targets,HVB — high voltage battery,hvb,Battery Performance Targets,build,bar,2026-10-01,2026-11-26,dav
freeze-red-team-4,HVB — high voltage battery,hvb,Freeze & red team,T−5,freeze,2026-11-26,2026-12-03,dav
battery-performance-target-development,HVB — high voltage battery,hvb,Battery Performance Target Development,graded · LARGE · 3 Dec (moved from 19 Nov on 30 Oct dashboard),milestone,2026-12-03,,dav
hv-work-permit-battery-build-book,HVB — high voltage battery,hvb,HV work permit + Battery Build Book,rule H-7.3 requires it in writing,bar,2026-10-01,2026-12-15,dav dor
marcom-manager-named,"PIT, MarCom & business",biz,MarCom Manager named,target,milestone,2026-09-17,,geo mar
gate-1-team-program-identity,"PIT, MarCom & business",biz,Gate 1: Team Program Identity,graded · 1 Oct (suggested),milestone,2026-10-01,,mar
green-garage-blog-1,"PIT, MarCom & business",biz,Green Garage Blog 1,graded · ABSOLUTE · 12 Nov (moved from 5 Nov on 30 Oct dashboard),milestone,2026-11-12,,mar
team-webpage-content,"PIT, MarCom & business",biz,Team Webpage Content,end of day · 15 Oct,milestone,2026-10-15,,mar geo
gate-2-visual-identity,"PIT, MarCom & business",biz,Gate 2: Visual Identity,graded · 22 Oct (suggested),milestone,2026-10-22,,mar
social-media-video-1,"PIT, MarCom & business",biz,Social Media Video 1,graded · 3 Dec (moved from 5 Nov on 9 Oct dashboard),milestone,2026-12-03,,mar
gate-3-brand-assets,"PIT, MarCom & business",biz,Gate 3: Brand Assets,graded · 12 Nov (suggested),milestone,2026-11-12,,mar
studio-1-check-in-business-portfolio-review,"PIT, MarCom & business",biz,Studio 1 Check-In: Business Portfolio Review,graded · 12 Nov,milestone,2026-11-12,,aya
gate-4-external-promotion-strategy,"PIT, MarCom & business",biz,Gate 4: External Promotion Strategy,graded · 3 Dec (suggested),milestone,2026-12-03,,mar
studio-1-sdv-business-understanding,"PIT, MarCom & business",biz,Studio 1: SDV Business Understanding,graded · 3 Dec,milestone,2026-12-03,,aya
social-media-data-collection,"PIT, MarCom & business",biz,Social media data collection,cannot be back-filled,bar,2026-09-05,2027-04-30,mar geo
outreach-data-collection,"PIT, MarCom & business",biz,Outreach data collection,logged the same day,bar,2026-09-15,2027-04-30,mar
pit-customer-discovery-gate-1,"PIT, MarCom & business",biz,PIT: customer discovery & Gate 1,"Studio 2 · 15 Apr, X-Large",tbd,2026-12-04,2027-04-15,aya
budget-purchase-log,"PIT, MarCom & business",biz,Budget & purchase log,held all year,bar,2026-09-25,2027-06-30,mar
micro-learning-1,"PIT, MarCom & business",biz,Studio 1: Post-Reflection,graded · 14 Jan · renamed from Micro-Learning 1 on 30 Oct dashboard,milestone,2027-01-14,,aya
green-garage-blog-2,"PIT, MarCom & business",biz,Green Garage Blog 2,graded · 21 Jan,milestone,2027-01-21,,mar
open-exploration-problem-space-portfolio,"PIT, MarCom & business",biz,Open Exploration: Problem Space Portfolio,graded · 4 Feb,milestone,2027-02-04,,aya
social-media-video-2,"PIT, MarCom & business",biz,Social Media Video 2,graded · 11 Feb,milestone,2027-02-11,,mar
studio-2-check-in-customer-business-portfolio,"PIT, MarCom & business",biz,Studio 2 Check-In: Customer / Business Portfolio Review,graded · 18 Feb,milestone,2027-02-18,,aya
micro-learning-2,"PIT, MarCom & business",biz,Studio 2: Mid-Reflection,graded · 18 Mar · renamed from Micro-Learning 2 on 30 Oct dashboard,milestone,2027-03-18,,aya
studio-2-customer-discovery-wedge-validation,"PIT, MarCom & business",biz,Studio 2: Customer Discovery and Wedge Validation,graded · X-Large · 15 Apr,milestone,2027-04-15,,aya
social-media-data-submission,"PIT, MarCom & business",biz,Social Media Data,end of day · 7 May,milestone,2027-05-07,,mar geo
outreach-data-submission,"PIT, MarCom & business",biz,Outreach Data,end of day · 7 May,milestone,2027-05-07,,mar
asset-library-submission,"PIT, MarCom & business",biz,Asset Library,end of day · 7 May,milestone,2027-05-07,,mar
marcom-gate1-program-identity-milestone,"PIT, MarCom & business",biz,Gate 1: Team Program Identity,Small - Absolute,milestone,2026-10-01,2026-10-01,mar
marcom-ggb1-milestone,"PIT, MarCom & business",biz,Green Garage Blog 1,Small - Absolute,milestone,2026-11-12,2026-11-12,mar
marcom-gate2-visual-identity-milestone,"PIT, MarCom & business",biz,Gate 2: Visual Identity,Small - Absolute,milestone,2026-10-22,2026-10-22,mar
marcom-smv1-milestone,"PIT, MarCom & business",biz,Social Media Video 1,Small - Absolute,milestone,2026-12-03,2026-12-03,mar
marcom-gate3-brand-assets-milestone,"PIT, MarCom & business",biz,Gate 3: Brand Assets,Small - Absolute,milestone,2026-11-12,2026-11-12,mar
marcom-gate4-external-promotion-milestone,"PIT, MarCom & business",biz,Gate 4: External Promotion Strategy,Small - Absolute,milestone,2026-12-03,2026-12-03,mar
marcom-ggb2-milestone,"PIT, MarCom & business",biz,Green Garage Blog 2,Small - Absolute,milestone,2027-01-21,2027-01-21,mar
marcom-smv2-milestone,"PIT, MarCom & business",biz,Social Media Video 2,Small - Absolute,milestone,2027-02-11,2027-02-11,mar
marcom-year-end-logs-milestone,"PIT, MarCom & business",biz,"Social Media Data, Outreach Data and Asset Library",Leadership requirement,milestone,2027-05-07,2027-05-07,mar
pit-studio1-checkin-milestone,"PIT, MarCom & business",biz,Studio 1 Check-In: Business Portfolio Review,Small - Absolute,milestone,2026-11-12,2026-11-12,aya
pit-studio1-milestone,"PIT, MarCom & business",biz,Studio 1: SDV Business Understanding and Wedge Hypothesis Formation,Medium - Relative,milestone,2026-12-03,2026-12-03,aya
pit-microlearning1-milestone,"PIT, MarCom & business",biz,Studio 1: Post-Reflection,Small - Absolute,milestone,2027-01-14,2027-01-14,aya
pit-open-exploration-milestone,"PIT, MarCom & business",biz,Open Exploration: Problem Space Portfolio,Medium - Absolute,milestone,2027-02-04,2027-02-04,aya
pit-studio2-checkin-milestone,"PIT, MarCom & business",biz,Studio 2 Check-in: Customer / Business Portfolio Review,Small - Absolute,milestone,2027-02-18,2027-02-18,aya
pit-microlearning2-milestone,"PIT, MarCom & business",biz,Studio 2: Mid-Reflection,Small - Absolute,milestone,2027-03-18,2027-03-18,aya
pit-studio2-milestone,"PIT, MarCom & business",biz,Studio 2: Customer Discovery and Wedge Validation,X-Large - Relative,milestone,2027-04-15,2027-04-15,aya
